# Proyecto1_apartado1_3_Revisado

How a schedule from MS Project changed from version to version. A marks actual dates.

## Version 1 (data date 2020-06-10, saved 2021-05-30, file Paso 3.1.mpp)

| ID | WBS | Task | Duration | Start | Finish | Predecessors | Complete | Total float |
| --- | --- | --- | --- | --- | --- | --- | --- | --- |
| 1 | A | **Definición del sistema** | 50d | 2020-01-08 A | 2020-03-18 A |  | 100% |  |
| 2 |  | Establecimiento de requisitos de usuario | 10d | 2020-01-08 A | 2020-01-21 A |  | 100% |  |
| 3 |  | Estudio de requisitos software | 25d | 2020-02-06 A | 2020-03-11 A | 2 | 100% |  |
| 4 |  | Validación de requisitos software | 3d | 2020-03-12 A | 2020-03-16 A | 3, 5 | 100% |  |
| 5 |  | Análisis de requisitos hardware/software | 30d | 2020-01-08 A | 2020-02-19 A |  | 100% |  |
| 6 |  | Preparación de la instalación | 5d | 2020-03-12 A | 2020-03-18 A | 3, 5 | 100% |  |
| 7 | B | **Análisis del sistema** | 75d | 2020-03-19 A | 2020-07-10 |  | 73% | 0d |
| 8 |  | Definición del entorno del sistema | 7d | 2020-03-19 A | 2020-04-06 A | 4, 6 | 100% |  |
| 9 |  | Análisis de casos de uso | 15d | 2020-04-07 A | 2020-04-27 A | 8 | 100% |  |
| 10 |  | Análisis de clases | 8d | 2020-06-10 | 2020-06-19 | 9FS+30d |  | 0d |
| 11 |  | Definición de interfaces de usuario | 40d | 2020-04-07 A | 2020-06-02 A | 8 | 100% |  |
| 12 |  | Especificación del plan de pruebas | 15d | 2020-06-22 | 2020-07-10 | 10, 11 |  | 0d |
| 13 | C | **Desarrollo del sistema** | 144d | 2020-07-13 | 2021-03-18 |  |  | 0d |
| 14 |  | Especificación detallada de construcción | 10d | 2020-07-13 | 2020-07-24 | 12 |  | 0d |
| 15 |  | Estudio y valoración de componentes | 32d | 2020-07-27 | 2020-10-16 | 14 |  | 0d |
| 16 |  | Estudio y valoración de procedimientos | 22d | 2020-07-27 | 2020-09-23 | 14 |  | 16d |
| 17 | C.4 | **Diseño y construcción** | 57d | 2020-10-19 | 2021-01-21 |  |  | 0d |
| 18 |  | Diseño de clases | 20d | 2020-10-19 | 2020-11-13 | 15, 16 |  | 5d |
| 19 |  | Diseño de casos de uso | 30d | 2020-10-19 | 2020-11-27 | 15, 16 |  | 0d |
| 20 |  | Codificación | 20d | 2020-11-16 | 2020-12-14 | 18SS+10d, 19SS+15d |  | 5d |
| 21 |  | Construcción de la base de datos | 17d | 2020-11-30 | 2020-12-23 | 18SS+10d, 19SS+15d |  | 0d |
| 22 |  | Maquetación de contenidos | 20d | 2020-12-07 | 2021-01-19 | 20SS+10d, 21SS+5d |  | 0d |
| 23 |  | Pruebas unitarias | 20d | 2020-12-07 | 2021-01-21 | 20SS+10d, 21SS+5d |  | 0d |
| 24 | C.5 | **Preparación de la transición** | 49d | 2021-01-08 | 2021-03-18 |  |  | 0d |
| 25 |  | Pruebas de integración | 32d | 2021-01-08 | 2021-02-23 | 22FF, 23FF |  | 0d |
| 26 |  | Manuales y ayuda online | 12d | 2021-02-24 | 2021-03-11 | 25 |  | 0d |
| 27 |  | Gestión de la configuración | 5d | 2021-03-12 | 2021-03-18 | 25 |  | 11d |
| 28 | D | **Puesta en explotación** | 38d | 2021-02-24 | 2021-04-26 |  |  | 0d |
| 29 |  | Formación de usuarios | 20d | 2021-03-12 | 2021-04-16 | 26 |  | 0d |
| 30 |  | Pruebas de sistema | 10d | 2021-02-24 | 2021-03-11 | 25 |  | 20d |
| 31 |  | Pruebas de aceptación | 7d | 2021-02-24 | 2021-03-04 | 25 |  | 21d |
| 32 |  | Entrega | 10d | 2021-03-19 | 2021-04-09 | 31, 27 |  | 11d |
| 33 |  | Cierre del proyecto | 6d | 2021-04-19 | 2021-04-26 | 30, 31, 27, 29 |  | 0d |

## Version 2 (data date 2021-02-01, saved 2021-05-30, file Paso 3.2.mpp)

Last finish stays 2021-04-26. Complete tasks 8 → 18.

Changed:

| ID | Task | Start | Finish | Complete | Total float |
| --- | --- | --- | --- | --- | --- |
| 7 | **Análisis del sistema** |  | 2020-07-10 A | 73% → 100% | 0d → none |
| 10 | Análisis de clases | 2020-06-10 A | 2020-06-19 A | 0% → 100% | 0d → none |
| 12 | Especificación del plan de pruebas | 2020-06-22 A | 2020-07-10 A | 0% → 100% | 0d → none |
| 13 | **Desarrollo del sistema** | 2020-07-13 A |  | 0% → 84% | 0d → 21d |
| 14 | Especificación detallada de construcción | 2020-07-13 A | 2020-07-24 A | 0% → 100% | 0d → none |
| 15 | Estudio y valoración de componentes | 2020-07-27 A | 2020-10-16 A | 0% → 100% | 0d → none |
| 16 | Estudio y valoración de procedimientos | 2020-07-27 A |  | 0% → 80% | 16d → 133d |
| 17 | **Diseño y construcción** | 2020-10-19 A | 2021-01-21 A | 0% → 100% | 0d → none |
| 18 | Diseño de clases | 2020-10-19 A | 2020-11-13 A | 0% → 100% | 5d → none |
| 19 | Diseño de casos de uso | 2020-10-19 A | 2020-11-27 A | 0% → 100% | 0d → none |
| 20 | Codificación | 2020-11-16 A | 2020-12-14 A | 0% → 100% | 5d → none |
| 21 | Construcción de la base de datos | 2020-11-30 A | 2020-12-23 A | 0% → 100% | 0d → none |
| 22 | Maquetación de contenidos | 2020-12-07 A | 2021-01-19 A | 0% → 100% | 0d → none |
| 23 | Pruebas unitarias | 2020-12-07 A | 2021-01-21 A | 0% → 100% | 0d → none |
| 24 | **Preparación de la transición** | 2021-01-08 A |  | 0% → 33% | 0d → 11d |
| 25 | Pruebas de integración | 2021-01-08 A |  | 0% → 50% |  |

## Version 3 (data date 2021-04-26, saved 2021-05-30, file Paso 3.3.mpp)

Last finish stays 2021-04-26. Complete tasks 18 → 27.

Changed:

| ID | Task | Start | Finish | Complete | Total float |
| --- | --- | --- | --- | --- | --- |
| 13 | **Desarrollo del sistema** |  | 2021-03-18 A | 84% → 100% | 21d → none |
| 16 | Estudio y valoración de procedimientos |  | 2020-09-23 A | 80% → 100% | 133d → none |
| 24 | **Preparación de la transición** |  | 2021-03-18 A | 33% → 100% | 11d → none |
| 25 | Pruebas de integración |  | 2021-02-23 A | 50% → 100% | 0d → none |
| 26 | Manuales y ayuda online | 2021-02-24 A | 2021-03-11 A | 0% → 100% | 0d → none |
| 27 | Gestión de la configuración | 2021-03-12 A | 2021-03-18 A | 0% → 100% | 11d → none |
| 28 | **Puesta en explotación** | 2021-02-24 A | 2021-04-26 A | 0% → 100% | 0d → none |
| 29 | Formación de usuarios | 2021-03-12 A | 2021-04-16 A | 0% → 100% | 0d → none |
| 30 | Pruebas de sistema | 2021-02-24 A | 2021-03-11 A | 0% → 100% | 20d → none |
| 31 | Pruebas de aceptación | 2021-02-24 A | 2021-03-04 A | 0% → 100% | 21d → none |
| 32 | Entrega | 2021-03-19 A | 2021-04-09 A | 0% → 100% | 11d → none |
| 33 | Cierre del proyecto | 2021-04-19 A | 2021-04-26 A | 0% → 100% | 0d → none |
